# Plataforma Web para centralización de camas críticas de internación en hospitales de la Provincia de Santa Fe

How a schedule from ProjectLibre changed from version to version. A marks actual dates.

## Version 1 (saved 2016-04-24)

Note of the change: se crea carpeta anteproyecto y se sube gantt

| ID | WBS | Task | Duration | Start | Finish | Predecessors | Total float | Constraint |
| --- | --- | --- | --- | --- | --- | --- | --- | --- |
| 1 |  | Hito: Proyecto iniciado | 0d? | 2016-03-15 | 2016-03-15 |  | 114200d | start no earlier than 2016-03-15 |
| 2 | 2 | **Capacitación en los requisitos y tecnologías establecidas por la STG** | 23d? | 2016-03-15 | 2016-04-07 |  |  | start no earlier than 2016-03-15 |
| 3 |  | Obtención y lectura de los documentos relacionados a proyectos de software | 5d? | 2016-03-15 | 2016-03-18 |  |  |  |
| 4 |  | Recopilación de información necesaria para el inicio de proyecto | 4d? | 2016-03-18 | 2016-03-22 | 3 |  |  |
| 5 |  | Obtención de material de estudio de las tecnologías para desarrollo de software | 2d? | 2016-03-23 | 2016-03-28 | 4 |  |  |
| 6 |  | Capacitación en tecnologías de desarrollo de software establecidas | 12d? | 2016-03-28 | 2016-04-07 | 5 |  |  |
| 7 | 3 | **Análisis del contexto del alcance del proyecto** | 46.5d? | 2016-04-07 | 2016-05-20 |  |  |  |
| 8 |  | Relevamiento de los actores, sistemas y beneficios generales | 12d? | 2016-04-07 | 2016-04-19 | 6 |  |  |
| 9 |  | Análisis de requerimientos del Sistema de Emergencias Médicas 107 | 8d? | 2016-04-19 | 2016-04-26 | 8 |  |  |
| 10 |  | Obtención de requerimientos externos al 107 | 8d? | 2016-04-26 | 2016-05-03 | 9 |  |  |
| 11 |  | Prototipo Web inicial y presentación a usuarios | 12.5d? | 2016-05-04 | 2016-05-16 | 10 |  |  |
| 12 |  | Informe 1: Análisis y requerimientos generales | 6d? | 2016-05-16 | 2016-05-20 | 11 |  |  |
| 13 |  | Hito: Finalización del análisis general del proyecto | 0d? | 2016-05-20 | 2016-05-20 | 12 |  |  |
| 14 | 5 | **Análisis de sistemas en producción y requisitos del estado** | 32d? | 2016-05-20 | 2016-06-22 |  |  |  |
| 15 |  | Análisis de los sistemas en producción de la Sectorial de Informática | 12d? | 2016-05-20 | 2016-06-02 | 13 |  |  |
| 16 |  | Relevamiento de las funcionalidades de los sistemas de la Sectorial de Informática | 8d? | 2016-06-02 | 2016-06-09 | 15 |  |  |
| 17 |  | Análisis de los requisitos y relevamiento de funcionalidades en hospitales privados | 4d? | 2016-06-09 | 2016-06-14 | 16 |  |  |
| 18 |  | Análisis de los sistemas clientes de la Sectorial de Informática | 8d? | 2016-06-14 | 2016-06-22 | 17 |  |  |
| 19 | 6 | **Definición de la estructura de datos** | 18d? | 2016-06-22 | 2016-07-11 |  |  |  |
| 20 |  | Definir la estructura de datos | 6d? | 2016-06-22 | 2016-06-28 | 18 |  |  |
| 21 |  | Generar los scripts de creación e inicialización de datos | 6d? | 2016-06-28 | 2016-07-04 | 20 |  |  |
| 22 |  | Informe 2: Relevamiento de sistemas y definición de la estructura de datos | 6d? | 2016-07-04 | 2016-07-11 | 21 |  |  |
| 23 |  | Hito: Fin del relevamiento de sistemas y definición de la estructura de datos | 0d? | 2016-07-11 | 2016-07-11 | 22 |  |  |
| 24 | 8 | **Desarrollo de los Web Services** | 38d? | 2016-07-11 | 2016-08-16 |  |  |  |
| 25 |  | Programación de los web services | 36d? | 2016-07-11 | 2016-08-12 | 23 |  |  |
| 26 |  | Generar la documentación | 2d? | 2016-08-12 | 2016-08-16 | 25 |  |  |
| 27 | 9 | **Desarrollo de los clientes Web Services** | 48d? | 2016-08-17 | 2016-09-29 |  |  |  |
| 28 |  | Desarrollo de los clientes específicos para cada uno de los sistemas estudiados | 36d? | 2016-08-17 | 2016-09-19 | 26 |  |  |
| 29 |  | Desarrollo de clientes genéricos de ejemplo para publicar a efectores privados | 8d? | 2016-09-20 | 2016-09-27 | 28 |  |  |
| 30 |  | Informe 3: Web Services y clientes | 4d? | 2016-09-27 | 2016-09-29 | 29 |  |  |
| 31 |  | Hito: Finalización del desarrollo de los Web Services y los clientes | 0d? | 2016-09-29 | 2016-09-29 | 30 |  |  |
| 32 | 11 | **Desarrollo del sistema de consulta web** | 48d? | 2016-09-30 | 2016-11-15 |  |  |  |
| 33 |  | Revisión y mejora del prototipo | 24d? | 2016-09-30 | 2016-10-24 | 31 |  |  |
| 34 |  | Desarrollo definitivo | 12d? | 2016-10-25 | 2016-11-03 | 33 |  |  |
| 35 |  | Crear documentación de ayuda al usuario | 10d? | 2016-11-04 | 2016-11-14 | 34 |  |  |
| 36 |  | Informe 4: Sistema de consulta Web | 2d? | 2016-11-14 | 2016-11-15 | 35 |  |  |
| 37 |  | Hito: Fin del desarrollo del sistema de consulta Web | 0d? | 2016-11-15 | 2016-11-15 | 36 |  |  |
| 38 | 13 | **Implementación y prueba** | 32d? | 2016-11-16 | 2016-12-20 |  |  |  |
| 39 |  | Instalación de la base de datos, web services y la consulta web en los servidores de la STG | 4d? | 2016-11-16 | 2016-11-18 | 37 |  |  |
| 40 |  | Generar una serie de pruebas utilizando los clientes de los web services y la consulta web | 8d? | 2016-11-18 | 2016-11-25 | 39 |  |  |
| 41 |  | Informe final: Documentación y conclusiones del proyecto | 20d? | 2016-11-29 | 2016-12-20 | 40 |  |  |
| 42 |  | Hito: Documentación y conclusiones del proyecto entregados | 0d? | 2016-12-20 | 2016-12-20 | 41 |  |  |

## Version 2 (saved 2016-04-25)

Note of the change: ultimas modificaciones antes de subir a la plataforma efich

Last finish 2016-12-20 → 2017-02-02 (+44d).

Changed:

| ID | Task | Start | Finish | Total float | Predecessors | Other |
| --- | --- | --- | --- | --- | --- | --- |
| 1 | Hito: Proyecto iniciado | 2016-03-15 → 2016-05-02 (+48d) | 2016-03-15 → 2016-05-02 (+48d) | 114200d → none |  | constraint start no earlier than 2016-03-15 → start no earlier than 2016-05-02 |
| 2 | **Capacitación en los requisitos y tecnologías establecidas por la STG** | 2016-03-15 → 2016-05-02 (+48d) | 2016-04-07 → 2016-05-23 (+46d) |  |  |  |
| 3 | Obtención y lectura de los documentos relacionados a proyectos de software | 2016-03-15 → 2016-05-02 (+48d) | 2016-03-18 → 2016-05-05 (+48d) |  | none → 1 |  |
| 4 | Recopilación de información necesaria para el inicio de proyecto | 2016-03-18 → 2016-05-05 (+48d) | 2016-03-22 → 2016-05-09 (+48d) |  |  |  |
| 5 | Obtención de material de estudio de las tecnologías para desarrollo de software | 2016-03-23 → 2016-05-10 (+48d) | 2016-03-28 → 2016-05-11 (+44d) |  |  |  |
| 6 | Capacitación en tecnologías de desarrollo de software establecidas | 2016-03-28 → 2016-05-11 (+44d) | 2016-04-07 → 2016-05-23 (+46d) |  |  |  |
| 7 | **Análisis del contexto del alcance del proyecto** | 2016-04-07 → 2016-05-23 (+46d) | 2016-05-20 → 2016-07-07 (+48d) |  |  |  |
| 8 | Relevamiento de los actores, sistemas y beneficios generales | 2016-04-07 → 2016-05-23 (+46d) | 2016-04-19 → 2016-06-03 (+45d) |  |  |  |
| 9 | Análisis de requerimientos del Sistema de Emergencias Médicas 107 | 2016-04-19 → 2016-06-03 (+45d) | 2016-04-26 → 2016-06-10 (+45d) |  |  |  |
| 10 | Obtención de requerimientos externos al 107 | 2016-04-26 → 2016-06-10 (+45d) | 2016-05-03 → 2016-06-17 (+45d) |  |  |  |
| 11 | Prototipo Web inicial y presentación a usuarios | 2016-05-04 → 2016-06-21 (+48d) | 2016-05-16 → 2016-07-01 (+46d) |  |  |  |
| 12 | Informe 1: Análisis y requerimientos generales | 2016-05-16 → 2016-07-01 (+46d) | 2016-05-20 → 2016-07-07 (+48d) |  |  |  |
| 13 | Hito: Finalización del análisis general del proyecto | 2016-05-20 → 2016-07-07 (+48d) | 2016-05-20 → 2016-07-07 (+48d) |  |  |  |
| 14 | **Análisis de sistemas en producción y requisitos del estado** | 2016-05-20 → 2016-07-07 (+48d) | 2016-06-22 → 2016-08-08 (+47d) |  |  |  |
| 15 | Análisis de los sistemas en producción de la Sectorial de Informática | 2016-05-20 → 2016-07-07 (+48d) | 2016-06-02 → 2016-07-20 (+48d) |  |  |  |
| 16 | Relevamiento de las funcionalidades de los sistemas de la Sectorial de Informática | 2016-06-02 → 2016-07-20 (+48d) | 2016-06-09 → 2016-07-27 (+48d) |  |  |  |
| 17 | Análisis de los requisitos y relevamiento de funcionalidades en hospitales privados | 2016-06-09 → 2016-07-27 (+48d) | 2016-06-14 → 2016-08-01 (+48d) |  |  |  |
| 18 | Análisis de los sistemas clientes de la Sectorial de Informática | 2016-06-14 → 2016-08-01 (+48d) | 2016-06-22 → 2016-08-08 (+47d) |  |  |  |
| 19 | **Definición de la estructura de datos** | 2016-06-22 → 2016-08-08 (+47d) | 2016-07-11 → 2016-08-25 (+45d) |  |  |  |
| 20 | Definir la estructura de datos | 2016-06-22 → 2016-08-08 (+47d) | 2016-06-28 → 2016-08-12 (+45d) |  |  |  |
| 21 | Generar los scripts de creación e inicialización de datos | 2016-06-28 → 2016-08-12 (+45d) | 2016-07-04 → 2016-08-19 (+46d) |  |  |  |
| 22 | Informe 2: Relevamiento de sistemas y definición de la estructura de datos | 2016-07-04 → 2016-08-19 (+46d) | 2016-07-11 → 2016-08-25 (+45d) |  |  |  |
| 23 | Hito: Fin del relevamiento de sistemas y definición de la estructura de datos | 2016-07-11 → 2016-08-25 (+45d) | 2016-07-11 → 2016-08-25 (+45d) |  |  |  |
| 24 | **Desarrollo de los Web Services** | 2016-07-11 → 2016-08-25 (+45d) | 2016-08-16 → 2016-09-29 (+44d) |  |  |  |
| 25 | Programación de los web services | 2016-07-11 → 2016-08-25 (+45d) | 2016-08-12 → 2016-09-28 (+47d) |  |  |  |
| 26 | Generar la documentación | 2016-08-12 → 2016-09-28 (+47d) | 2016-08-16 → 2016-09-29 (+44d) |  |  |  |
| 27 | **Desarrollo de los clientes Web Services** | 2016-08-17 → 2016-09-30 (+44d) | 2016-09-29 → 2016-11-15 (+47d) |  |  |  |
| 28 | Desarrollo de los clientes específicos para cada uno de los sistemas estudiados | 2016-08-17 → 2016-09-30 (+44d) | 2016-09-19 → 2016-11-03 (+45d) |  |  |  |
| 29 | Desarrollo de clientes genéricos de ejemplo para publicar a efectores privados | 2016-09-20 → 2016-11-04 (+45d) | 2016-09-27 → 2016-11-11 (+45d) |  |  |  |
| 30 | Informe 3: Web Services y clientes | 2016-09-27 → 2016-11-11 (+45d) | 2016-09-29 → 2016-11-15 (+47d) |  |  |  |
| 31 | Hito: Finalización del desarrollo de los Web Services y los clientes | 2016-09-29 → 2016-11-15 (+47d) | 2016-09-29 → 2016-11-15 (+47d) |  |  |  |
| 32 | **Desarrollo del sistema de consulta web** | 2016-09-30 → 2016-11-16 (+47d) | 2016-11-15 → 2017-01-03 (+49d) |  |  |  |
| 33 | Revisión y mejora del prototipo | 2016-09-30 → 2016-11-16 (+47d) | 2016-10-24 → 2016-12-12 (+49d) |  |  |  |
| 34 | Desarrollo definitivo | 2016-10-25 → 2016-12-13 (+49d) | 2016-11-03 → 2016-12-22 (+49d) |  |  |  |
| 35 | Crear documentación de ayuda al usuario | 2016-11-04 → 2016-12-23 (+49d) | 2016-11-14 → 2017-01-02 (+49d) |  |  |  |
| 36 | Informe 4: Sistema de consulta Web | 2016-11-14 → 2017-01-02 (+49d) | 2016-11-15 → 2017-01-03 (+49d) |  |  |  |
| 37 | Hito: Fin del desarrollo del sistema de consulta Web | 2016-11-15 → 2017-01-03 (+49d) | 2016-11-15 → 2017-01-03 (+49d) |  |  |  |
| 38 | **Implementación y prueba** | 2016-11-16 → 2017-01-04 (+49d) | 2016-12-20 → 2017-02-02 (+44d) |  |  |  |
| 39 | Instalación de la base de datos, web services y la consulta web en los servidores de la STG | 2016-11-16 → 2017-01-04 (+49d) | 2016-11-18 → 2017-01-06 (+49d) |  |  |  |
| 40 | Generar una serie de pruebas utilizando los clientes de los web services y la consulta web | 2016-11-18 → 2017-01-06 (+49d) | 2016-11-25 → 2017-01-13 (+49d) |  |  |  |
| 41 | Informe final: Documentación y conclusiones del proyecto | 2016-11-29 → 2017-01-16 (+48d) | 2016-12-20 → 2017-02-02 (+44d) |  |  |  |
| 42 | Hito: Documentación y conclusiones del proyecto entregados | 2016-12-20 → 2017-02-02 (+44d) | 2016-12-20 → 2017-02-02 (+44d) |  |  |  |

## Version 3 (saved 2017-01-06)

Note of the change: continua modificacion de anteproyecto sugerencia lucila

Last finish stays 2017-02-02.

Changed:

| ID | Task | Other |
| --- | --- | --- |
| 11 | Pantalla de ejemplo del sistema web y presentación a usuarios | was named Prototipo Web inicial y presentación a usuarios |
| 33 | Revisión y mejora del ejemplo presentado en la tarea 2.4 | was named Revisión y mejora del prototipo |
| 34 | Desarrollo de las funcionalidades del sistema de consulta web | was named Desarrollo definitivo |
